# CertifDiplo-V1

How a schedule from MS Project changed from version to version. A marks actual dates.

## Version 1 (saved 2022-02-15)

Note of the change: Creación de la base de datos y captura del esquema mismo.

| ID | WBS | Task | Duration | Start | Finish | Predecessors | Complete | Total float |
| --- | --- | --- | --- | --- | --- | --- | --- | --- |
| 1 | 1 | **Diplomas y Certificados V1** | 29d | 2022-02-07 A | 2022-03-17 |  | 5% | 0d |
| 2 | 1.1 | **Panel de Usuario** | 8d | 2022-02-07 A | 2022-02-16 |  | 17% | 0d |
| 3 |  | Acceso de Usuario | 1d | 2022-02-07 A | 2022-02-07 |  | 20% | 0.1d |
| 4 |  | Home | 1d | 2022-02-08 A | 2022-02-08 | 3 | 10% | 0.2d |
| 5 |  | Mis Cursos | 2d | 2022-02-09 A | 2022-02-10 | 4 | 10% | 0.75d |
| 6 |  | Ver Certificado | 3d | 2022-02-11 A | 2022-02-15 | 5 | 25% | 0.1d |
| 7 |  | Perfil | 1d | 2022-02-16 A | 2022-02-16 | 6 | 10% | 0d |
| 8 | 1.2 | **panel de Administrador** | 14d | 2022-02-17 | 2022-03-08 |  |  | 0d |
| 9 |  | Acceso de Administrador | 1d | 2022-02-17 | 2022-02-17 | 7 |  | 0d |
| 10 |  | Home | 1d | 2022-02-18 | 2022-02-18 | 9 |  | 0d |
| 11 |  | Mantenimiento de Cursos | 2d | 2022-02-21 | 2022-02-22 | 10 |  | 0d |
| 12 |  | Mantenimiento de Categorías | 2d | 2022-02-23 | 2022-02-24 | 11 |  | 0d |
| 13 |  | Mantenimiento de Instructores | 2d | 2022-02-25 | 2022-02-28 | 12 |  | 0d |
| 14 |  | mantenimiento de Usuarios | 2d | 2022-03-01 | 2022-03-02 | 13 |  | 0d |
| 15 |  | Detalle de Certificados | 3d | 2022-03-03 | 2022-03-07 | 14 |  | 0d |
| 16 |  | Perfil | 1d | 2022-03-08 | 2022-03-08 | 15 |  | 0d |
| 17 | 1.3 | **Pruebas** | 7d | 2022-03-09 | 2022-03-17 |  |  |  |
| 18 |  | Pruebas con el Cliente | 5d | 2022-03-09 | 2022-03-15 | 16 |  | 0d |
| 19 |  | Observaciones y Correcciones | 2d | 2022-03-16 | 2022-03-17 | 18 |  | 0d |

## Version 2 (saved 2022-05-21)

Note of the change: Programación del panel de control, mostrar el total de cursos por usuario.

Last finish stays 2022-03-17.

Changed:

| ID | Task | Complete | Total float |
| --- | --- | --- | --- |
| 1 | **Diplomas y Certificados V1** | 5% → 19% |  |
| 2 | **Panel de Usuario** | 17% → 68% |  |
| 3 | Acceso de Usuario | 20% → 90% |  |
| 5 | Mis Cursos | 10% → 80% | 0.75d → 2.7d |
| 6 | Ver Certificado | 25% → 90% |  |

## Version 3 (saved 2022-05-25)

Note of the change: Preparación del panel de control (Inicio) con el contador de cursos y tabla top 10 cursos.

Last finish stays 2022-03-17. Complete tasks 0 → 4.

Changed:

| ID | Task | Finish | Complete | Total float |
| --- | --- | --- | --- | --- |
| 1 | **Diplomas y Certificados V1** |  | 19% → 24% |  |
| 2 | **Panel de Usuario** |  | 68% → 89% |  |
| 3 | Acceso de Usuario | 2022-02-07 A | 90% → 100% | 0.1d → none |
| 4 | Home | 2022-02-08 A | 10% → 100% | 1.6d → none |
| 5 | Mis Cursos | 2022-02-10 A | 80% → 100% | 2.7d → none |
| 6 | Ver Certificado | 2022-02-15 A | 90% → 100% | 0.1d → none |
